# 星火G3.5 1A

Schedule from a web Gantt chart, 2025-08-08 to 2025-12-29.
Every day is a working day

## Schedule

| ID | WBS | Task | Duration | Start | Finish | Predecessors | Complete | Status |
| --- | --- | --- | --- | --- | --- | --- | --- | --- |
| 2 | 1 | Layout ready | 4d | 2025-08-08 | 2025-08-11 |  | 100% | done |
| 3 | 2 | Mask in & W/S | 28d | 2025-08-12 | 2025-09-08 | 2 | 100% |  |
| 4 | 3 | 1st device lot F/O & CP | 20d | 2025-09-09 | 2025-09-28 | 3 | 100% | waiting |
| 5 | 4 | Assembly | 30d | 2025-09-29 | 2025-10-28 | 4 | 45% | waiting |
| 6 | 5 | Package ready | 2d | 2025-10-29 | 2025-10-30 | 5 |  | waiting |
| 7 | 6 | **RE 验证** | 60d | 2025-10-31 | 2025-12-29 |  |  |  |
| 8 | 6.1 | RE 168H & Samples ready | 15d | 2025-10-31 | 2025-11-14 | 6 |  | waiting |
| 9 | 6.2 | RE 1000H | 60d | 2025-10-31 | 2025-12-29 | 6 |  | waiting |
